# 项目任务清单_8周压缩版

Schedule from MS Project, 2026-03-02 to 2026-04-24.

## Calendars

- 标准: Mon-Fri 08:00-12:00, 13:00-17:00; Sat-Sun off.

## Resources

| Resource |
| --- |
| 曹相阳 |
| 金青宏 |
| 曹彭博 |
| 涂睿轩 |
| 曾彦承 |
| 朱写 |
| 钱泰文 |
| 余博文 |
| 李一鸣 |
| 王琛红 |
| 王威霖 |
| 孙谋 |

## Schedule

| ID | WBS | Task | Type | Duration | Start | Finish | Predecessors | Total slack | Free slack | Resources | Work |
| --- | --- | --- | --- | --- | --- | --- | --- | --- | --- | --- | --- |
| 1 | 1 | **S1 需求与设计** |  | 7d | 2026-03-02 | 2026-03-10 |  | 0d |  |  | 424h |
| 2 | 1.1 | 项目启动会、协作工具搭建 |  | 1d | 2026-03-02 | 2026-03-02 |  | 0d |  | 曹相阳; 金青宏; 曹彭博; 涂睿轩; 曾彦承; 朱写; 钱泰文; 余博文; 李一鸣; 王琛红; 王威霖; 孙谋 | 96h |
| 3 | 1.2 | 需求调研与MoSCoW评审 |  | 3d | 2026-03-03 | 2026-03-05 | 2 | 0d |  | 金青宏; 曹相阳; 曹彭博 | 72h |
| 4 | 1.3 | 技术选型与开发环境 |  | 2d | 2026-03-03 | 2026-03-04 | 2SS+1d | 0d |  | 曹彭博; 孙谋 | 32h |
| 5 | 1.4 | 数据库设计（ER图+DDL） |  | 4d | 2026-03-05 | 2026-03-10 | 4 | 0d |  | 曹彭博; 钱泰文 | 64h |
| 6 | 1.5 | 原型与UI设计 |  | 4d | 2026-03-05 | 2026-03-10 | 3SS+2d | 0d |  | 金青宏 | 32h |
| 7 | 1.6 | 接口设计（OpenAPI） |  | 2d | 2026-03-06 | 2026-03-09 | 5SS+1d | 1d |  | 曹彭博; 余博文 | 32h |
| 8 | 1.7 | 前端脚手架与公共组件 |  | 3d | 2026-03-05 | 2026-03-09 | 4 | 1d |  | 涂睿轩; 曾彦承; 朱写 | 72h |
| 9 | 1.8 | 后端脚手架与认证框架 |  | 3d | 2026-03-05 | 2026-03-09 | 4 | 1d |  | 钱泰文 | 24h |
| 10 | 1.9 | M1 设计评审 | milestone | 0d | 2026-03-10 | 2026-03-10 | 5, 6, 7, 8, 9 | 0d |  | 曹相阳; 曹彭博 |  |
| 11 | 2 | **S2 迭代1：基础与业务** |  | 12d | 2026-03-11 | 2026-03-26 |  | 0d |  |  | 584h |
| 12 | 2.1 | 登录与RBAC权限（前后端） |  | 3d | 2026-03-11 | 2026-03-13 | 10 | 0d |  | 涂睿轩; 钱泰文 | 48h |
| 13 | 2.2 | 企业信息录入与备案（前后端） |  | 3d | 2026-03-11 | 2026-03-13 | 10 | 0d |  | 曾彦承; 余博文 | 48h |
| 14 | 2.3 | 省级备案审核（前后端） |  | 3d | 2026-03-11 | 2026-03-13 | 10 | 1d | 0d | 朱写; 李一鸣 | 48h |
| 15 | 2.4 | 上报时限管理 |  | 2d | 2026-03-11 | 2026-03-12 | 10 | 31d |  | 曹彭博; 涂睿轩 | 32h |
| 16 | 2.5 | 测试用例设计-Iter1 |  | 5d | 2026-03-11 | 2026-03-17 | 10 | 28d |  | 王威霖 | 40h |
| 17 | 2.6 | 数据填报功能（前后端） |  | 4d | 2026-03-16 | 2026-03-19 | 13 | 0d |  | 曾彦承; 余博文 | 64h |
| 18 | 2.7 | 市级审核与上报省级 |  | 3d | 2026-03-16 | 2026-03-18 | 14 | 1d |  | 朱写; 李一鸣 | 48h |
| 19 | 2.8 | 省级审核、退回、修改日志 |  | 4d | 2026-03-16 | 2026-03-19 | 12 | 0d |  | 涂睿轩; 王琛红 | 64h |
| 20 | 2.9 | Iter1集成自测 |  | 1d | 2026-03-20 | 2026-03-20 | 17, 18, 19 | 25d |  | 涂睿轩; 曾彦承; 朱写; 钱泰文; 余博文; 李一鸣; 王琛红 | 56h |
| 21 | 2.10 | Iter1功能测试 |  | 3d | 2026-03-20 | 2026-03-24 | 17, 18, 19 | 0d |  | 王威霖 | 24h |
| 22 | 2.11 | Iter1缺陷修复 |  | 2d | 2026-03-25 | 2026-03-26 | 21 | 0d |  | 涂睿轩; 曾彦承; 朱写; 钱泰文; 余博文; 李一鸣; 王琛红 | 112h |
| 23 | 2.12 | M2 Iter1演示评审 | milestone | 0d | 2026-03-26 | 2026-03-26 | 22 | 0d |  | 曹相阳 |  |
| 24 | 3 | **S3 迭代2：分析与导出** |  | 10d | 2026-03-27 | 2026-04-09 |  | 0d |  |  | 504h |
| 25 | 3.1 | 数据汇总（地区/行业/调查期） |  | 4d | 2026-03-27 | 2026-04-01 | 23 | 0d |  | 曾彦承; 余博文 | 64h |
| 26 | 3.2 | 对比分析（折线图+表格） |  | 4d | 2026-03-27 | 2026-04-01 | 23 | 0d |  | 朱写; 李一鸣 | 64h |
| 27 | 3.3 | 通知发布与浏览 |  | 3d | 2026-03-27 | 2026-03-31 | 23 | 1d |  | 涂睿轩; 王琛红 | 48h |
| 28 | 3.4 | 数据查询（多条件） |  | 3d | 2026-03-27 | 2026-03-31 | 23 | 18d |  | 涂睿轩; 钱泰文 | 48h |
| 29 | 3.5 | 数据导出Excel |  | 3d | 2026-03-31 | 2026-04-02 | 25SS+2d | 5d |  | 曾彦承; 余博文 | 48h |
| 30 | 3.6 | 搭建测试与生产环境 |  | 5d | 2026-03-27 | 2026-04-02 | 23 | 5d |  | 孙谋 | 40h |
| 31 | 3.7 | 国家接口桩+操作手册 |  | 3d | 2026-03-27 | 2026-03-31 | 23 | 7d |  | 曹彭博; 金青宏 | 48h |
| 32 | 3.8 | Iter2功能测试 |  | 4d | 2026-04-02 | 2026-04-07 | 25, 26, 27 | 0d |  | 王威霖 | 32h |
| 33 | 3.9 | Iter2缺陷修复 |  | 2d | 2026-04-08 | 2026-04-09 | 32 | 0d |  | 涂睿轩; 曾彦承; 朱写; 钱泰文; 余博文; 李一鸣; 王琛红 | 112h |
| 34 | 3.10 | M3 Beta版本（系统测试通过） | milestone | 0d | 2026-04-09 | 2026-04-09 | 29, 30, 31, 33 | 0d |  | 曹相阳; 王威霖 |  |

Notes:
- 1: M1：W2末完成设计基线
- 2: W1周一
- 3: 基于工作说明书，缩短1天
- 4: 与需求并行，缩短1天
- 5: 合并原任务6+9
- 6: 合并原任务7+8，与需求重叠
- 7: 与库设计并行
- 8: 3人并行，缩短2天
- 9: 缩短2天
- 10: 里程碑（W2末）
- 11: Must功能开发
- 12: 原15+16合并，配对开发
- 13: 原17+18合并
- 14: 原19+20合并
- 15: 小模块，2天足够
- 16: 与开发完全并行
- 17: 原22+23合并
- 18: 原24
- 19: 原25
- 20: 缩短到1天
- 21: 测试与开发深度并行
- 22: 边测边修
- 23: 里程碑（W4末）
- 24: Should功能
- 25: 原32
- 26: 原33
- 27: 原34
- 28: 原36，提前到23启动
- 29: 汇总开始2天后即可做导出
- 30: 与开发完全并行
- 31: 合并杂项任务
- 32: 测试与开发并行
- 34: 里程碑（W6末）

| ID | WBS | Task | Type | Duration | Start | Finish | Predecessors | Total slack | Resources | Work |
| --- | --- | --- | --- | --- | --- | --- | --- | --- | --- | --- |
| 35 | 4 | **S4 测试与上线** |  | 11d | 2026-04-10 | 2026-04-24 |  | 0d |  | 480h |
| 36 | 4.1 | 系统集成测试 |  | 3d | 2026-04-10 | 2026-04-14 | 34 | 0d | 王威霖; 曹彭博 | 48h |
| 37 | 4.2 | 性能测试（100并发） |  | 2d | 2026-04-15 | 2026-04-16 | 36 | 6d | 王威霖; 孙谋 | 32h |
| 38 | 4.3 | 集成缺陷修复 |  | 2d | 2026-04-15 | 2026-04-16 | 36 | 0d | 涂睿轩; 曾彦承; 朱写; 钱泰文; 余博文; 李一鸣; 王琛红 | 112h |
| 39 | 4.4 | 生产部署、数据初始化 |  | 1d | 2026-04-17 | 2026-04-17 | 38 | 0d | 孙谋; 曹彭博 | 16h |
| 40 | 4.5 | UAT用户验收测试 |  | 2d | 2026-04-20 | 2026-04-21 | 39 | 0d | 王威霖; 曹相阳; 金青宏 | 48h |
| 41 | 4.6 | UAT问题修复 |  | 2d | 2026-04-21 | 2026-04-22 | 40SS+1d | 0d | 涂睿轩; 曾彦承; 朱写; 钱泰文; 余博文; 李一鸣; 王琛红 | 112h |
| 42 | 4.7 | 用户培训（省/市/企业） |  | 1d | 2026-04-23 | 2026-04-23 | 41 | 0d | 金青宏; 曹相阳 | 16h |
| 43 | 4.8 | 项目验收会与文档归档 |  | 1d | 2026-04-24 | 2026-04-24 | 42 | 0d | 曹相阳; 金青宏; 曹彭博; 涂睿轩; 曾彦承; 朱写; 钱泰文; 余博文; 李一鸣; 王琛红; 王威霖; 孙谋 | 96h |
| 44 | 4.9 | M4 项目验收完成 | milestone | 0d | 2026-04-24 | 2026-04-24 | 43 | 0d | 曹相阳 |  |

Notes:
- 35: UAT、部署、验收
- 40: 甲方参与
- 41: 边UAT边修
- 44: 里程碑（W8末）
