# 甘特图v2

Schedule from MS Project, 2026-03-02 to 2026-04-27.

## Calendars

- 标准: Mon-Fri 08:00-12:00, 13:00-17:00; Sat-Sun off.

## Resources

| Resource |
| --- |
| 曹相阳 |
| 金青宏 |
| 曹彭博 |
| 涂睿轩 |
| 曾彦承 |
| 朱写 |
| 钱泰文 |
| 余博文 |
| 李一鸣 |
| 王琛红 |
| 王威霖 |
| 孙谋 |

## Schedule

| ID | WBS | Task | Type | Duration | Start | Finish | Predecessors | Total slack | Free slack | Resources | Work |
| --- | --- | --- | --- | --- | --- | --- | --- | --- | --- | --- | --- |
| 1 | 1 | **S1 需求与设计** |  | 7d | 2026-03-02 | 2026-03-10 |  | 4.5d |  |  | 424h |
| 2 | 1.1 | 项目启动会、协作工具搭建 |  | 1d | 2026-03-02 | 2026-03-02 |  | 4.5d | 0d | 曹相阳; 金青宏; 曹彭博; 涂睿轩; 曾彦承; 朱写; 钱泰文; 余博文; 李一鸣; 王琛红; 王威霖; 孙谋 | 96h |
| 3 | 1.2 | 需求调研与MoSCoW评审 |  | 3d | 2026-03-03 | 2026-03-05 | 2 | 4.5d | 0d | 金青宏; 曹相阳; 曹彭博 | 72h |
| 4 | 1.3 | 技术选型与开发环境 |  | 2d | 2026-03-03 | 2026-03-04 | 2SS+1d | 4.5d | 0d | 曹彭博; 孙谋 | 32h |
| 5 | 1.4 | 数据库设计（ER图+DDL） |  | 4d | 2026-03-05 | 2026-03-10 | 4 | 4.5d | 0d | 曹彭博; 钱泰文 | 64h |
| 6 | 1.5 | 原型与UI设计 |  | 4d | 2026-03-05 | 2026-03-10 | 3SS+2d | 4.5d | 0d | 金青宏 | 32h |
| 7 | 1.6 | 接口设计（OpenAPI） |  | 2d | 2026-03-06 | 2026-03-09 | 5SS+1d | 5.5d | 1d | 曹彭博; 余博文 | 32h |
| 8 | 1.7 | 前端脚手架与公共组件 |  | 3d | 2026-03-05 | 2026-03-09 | 4 | 5.5d | 1d | 涂睿轩; 曾彦承; 朱写 | 72h |
| 9 | 1.8 | 后端脚手架与认证框架 |  | 3d | 2026-03-05 | 2026-03-09 | 4 | 5.5d | 1d | 钱泰文 | 24h |
| 10 | 1.9 | M1 设计评审 | milestone | 0d | 2026-03-10 | 2026-03-10 | 5, 6, 7, 8, 9 | 4.5d | 0d | 曹相阳; 曹彭博 |  |
| 11 | 2 | **S2 迭代1：基础与业务** |  | 12d | 2026-03-11 | 2026-03-26 |  | 4.5d |  |  | 584h |
| 12 | 2.1 | 登录与RBAC权限（前后端） |  | 3d | 2026-03-11 | 2026-03-13 | 10 | 4.5d | 0d | 涂睿轩; 钱泰文 | 48h |
| 13 | 2.2 | 企业信息录入与备案（前后端） |  | 3d | 2026-03-11 | 2026-03-13 | 10 | 4.5d | 0d | 曾彦承; 余博文 | 48h |
| 14 | 2.3 | 省级备案审核（前后端） |  | 3d | 2026-03-11 | 2026-03-13 | 10 | 5.5d | 0d | 朱写; 李一鸣 | 48h |
| 15 | 2.4 | 上报时限管理 |  | 2d | 2026-03-11 | 2026-03-12 | 10 | 31.5d |  | 曹彭博; 涂睿轩 | 32h |
| 16 | 2.5 | 测试用例设计-Iter1 |  | 5d | 2026-03-11 | 2026-03-17 | 10 | 28.5d |  | 王威霖 | 40h |
| 17 | 2.6 | 数据填报功能（前后端） |  | 4d | 2026-03-16 | 2026-03-19 | 13 | 4.5d | 0d | 曾彦承; 余博文 | 64h |
| 18 | 2.7 | 市级审核与上报省级 |  | 3d | 2026-03-16 | 2026-03-18 | 14 | 5.5d | 1d | 朱写; 李一鸣 | 48h |
| 19 | 2.8 | 省级审核、退回、修改日志 |  | 4d | 2026-03-16 | 2026-03-19 | 12 | 4.5d | 0d | 涂睿轩; 王琛红 | 64h |
| 20 | 2.9 | Iter1集成自测 |  | 1d | 2026-03-20 | 2026-03-20 | 17, 18, 19 | 25.5d |  | 涂睿轩; 曾彦承; 朱写; 钱泰文; 余博文; 李一鸣; 王琛红 | 56h |
| 21 | 2.10 | Iter1功能测试 |  | 3d | 2026-03-20 | 2026-03-24 | 17, 18, 19 | 4.5d | 0d | 王威霖 | 24h |
| 22 | 2.11 | Iter1缺陷修复 |  | 2d | 2026-03-25 | 2026-03-26 | 21 | 4.5d | 0d | 涂睿轩; 曾彦承; 朱写; 钱泰文; 余博文; 李一鸣; 王琛红 | 112h |
| 23 | 2.12 | M2 Iter1演示评审 | milestone | 0d | 2026-03-26 | 2026-03-26 | 22 | 4.5d | 0d | 曹相阳 |  |
| 24 | 3 | **S3 迭代2：分析与导出** |  | 5d | 2026-03-27 | 2026-04-02 |  | 4.5d |  |  | 360h |
| 25 | 3.1 | 数据汇总（地区/行业/调查期） |  | 4d | 2026-03-27 | 2026-04-01 | 23 | 4.5d | 0d | 曾彦承; 余博文 | 64h |
| 26 | 3.2 | 对比分析（折线图+表格） |  | 4d | 2026-03-27 | 2026-04-01 | 23 | 4.5d | 0d | 朱写; 李一鸣 | 64h |
| 27 | 3.3 | 通知发布与浏览 |  | 3d | 2026-03-27 | 2026-03-31 | 23 | 5.5d | 1d | 涂睿轩; 王琛红 | 48h |
| 28 | 3.4 | 数据查询（多条件） |  | 3d | 2026-03-27 | 2026-03-31 | 23 | 18.5d |  | 涂睿轩; 钱泰文 | 48h |
| 29 | 3.5 | 数据导出Excel |  | 3d | 2026-03-31 | 2026-04-02 | 25SS+2d | 7.5d |  | 曾彦承; 余博文 | 48h |
| 30 | 3.6 | 搭建测试与生产环境 |  | 5d | 2026-03-27 | 2026-04-02 | 23 | 7.5d |  | 孙谋 | 40h |
| 31 | 3.7 | 国家接口桩+操作手册 |  | 3d | 2026-03-27 | 2026-03-31 | 23 | 9.5d |  | 曹彭博; 金青宏 | 48h |

Notes:
- 1: M1：W2末完成设计基线
- 2: W1周一
- 4: 与需求并行
- 8: 3人并行
- 10: 里程碑（W2末）
- 11: Must功能开发
- 23: 里程碑（W4末）
- 24: Should功能 + CR-001变更

| ID | WBS | Task | Type | Duration | Start | Finish | Predecessors | Total slack | Free slack | Constraint | Resources | Work |
| --- | --- | --- | --- | --- | --- | --- | --- | --- | --- | --- | --- | --- |
| 32 | 4 | **【CR-001】变更专项汇总** |  | 8.5d | 2026-04-02 | 2026-04-14 |  | 1d |  |  |  | 280h |
| 33 | 4.1 | 【CR-001】变更技术方案讨论会 |  | 0.5d | 2026-04-03 | 2026-04-03 |  | 0d |  | start no earlier than 2026-04-03 | 曹相阳; 曹彭博; 钱泰文; 余博文; 金青宏 | 20h |
| 34 | 4.2 | 【CR-001】详细技术方案与改造清单 |  | 2d | 2026-04-03 | 2026-04-07 | 33 | 0d |  |  | 曹彭博 | 16h |
| 35 | 4.3 | 【CR-001】数据库迁移脚本（可回滚） |  | 1d | 2026-04-07 | 2026-04-08 | 34 | 2d |  |  | 钱泰文 | 8h |
| 36 | 4.4 | 【CR-001】上报时限管理UI改造 |  | 1d | 2026-04-07 | 2026-04-08 | 34 | 2d |  |  | 涂睿轩; 曹彭博 | 16h |
| 37 | 4.5 | 【CR-001】数据填报模块改造 |  | 1.5d | 2026-04-07 | 2026-04-08 | 34 | 0d |  |  | 曾彦承; 余博文 | 24h |
| 38 | 4.6 | 【CR-001】数据汇总合并逻辑改造 |  | 1.5d | 2026-04-09 | 2026-04-10 | 37 | 0d |  |  | 余博文 | 12h |
| 39 | 4.7 | 【CR-001】接口文档更新 |  | 0.5d | 2026-04-07 | 2026-04-07 | 34 | 13.5d |  |  | 钱泰文; 曹彭博 | 8h |
| 40 | 4.8 | 【CR-001】半月报回归测试用例 |  | 1d | 2026-04-07 | 2026-04-08 | 34 | 13d |  |  | 王威霖 | 8h |
| 41 | 4.9 | 【CR-001】半月报回归测试执行 |  | 1.5d | 2026-04-10 | 2026-04-13 | 35, 36, 37, 38 | 0d |  | start no earlier than 2026-04-10 | 王威霖 | 12h |
| 42 | 4.10 | 【CR-001】变更交付内部验收 |  | 0.5d | 2026-04-14 | 2026-04-14 | 38, 41 | 0d |  |  | 曹相阳; 曹彭博; 王威霖 | 12h |
| 43 | 4.11 | M3-CR 变更交付完成 | milestone | 0d | 2026-04-14 | 2026-04-14 | 42 | 0d |  |  | 曹相阳 |  |
| 44 | 4.12 | Iter2功能测试 |  | 4d | 2026-04-02 | 2026-04-07 | 25, 26, 27 | 4.5d | 0d |  | 王威霖 | 32h |
| 45 | 4.13 | Iter2缺陷修复 |  | 2d | 2026-04-06 | 2026-04-07 | 44SS+2d | 4.5d |  |  | 涂睿轩; 曾彦承; 朱写; 钱泰文; 余博文; 李一鸣; 王琛红 | 112h |
| 46 | 4.14 | M3 Beta版本（系统测试通过） | milestone | 0d | 2026-04-14 | 2026-04-14 | 29, 30, 31, 43, 45 | 0d |  |  | 曹相阳; 王威霖 |  |
| 47 | 5 | **S4 测试与上线** |  | 9d | 2026-04-14 | 2026-04-27 |  | 0d |  |  |  | 480h |
| 48 | 5.1 | 系统集成测试（含半月报场景） |  | 3d | 2026-04-14 | 2026-04-17 | 46 | 0d |  |  | 王威霖; 曹彭博 | 48h |
| 49 | 5.2 | 性能测试（100并发） |  | 2d | 2026-04-15 | 2026-04-17 | 48SS+1d | 6d |  |  | 王威霖; 孙谋 | 32h |
| 50 | 5.3 | 集成缺陷修复 |  | 2d | 2026-04-15 | 2026-04-17 | 48SS+1d | 0d |  |  | 涂睿轩; 曾彦承; 朱写; 钱泰文; 余博文; 李一鸣; 王琛红 | 112h |
| 51 | 5.4 | 生产部署、数据初始化 |  | 1d | 2026-04-17 | 2026-04-20 | 50 | 0d |  |  | 孙谋; 曹彭博 | 16h |
| 52 | 5.5 | UAT用户验收测试（整合半月报） |  | 2d | 2026-04-20 | 2026-04-22 | 51 | 0d |  |  | 王威霖; 曹相阳; 金青宏 | 48h |
| 53 | 5.6 | UAT问题修复 |  | 2d | 2026-04-21 | 2026-04-23 | 52SS+1d | 0d |  |  | 涂睿轩; 曾彦承; 朱写; 钱泰文; 余博文; 李一鸣; 王琛红 | 112h |
| 54 | 5.7 | 用户培训（含半月报操作） |  | 1d | 2026-04-23 | 2026-04-24 | 53 | 0d |  |  | 金青宏; 曹相阳 | 16h |
| 55 | 5.8 | 项目验收会与文档归档 |  | 1d | 2026-04-24 | 2026-04-27 | 54 | 0d |  |  | 曹相阳; 金青宏; 曹彭博; 涂睿轩; 曾彦承; 朱写; 钱泰文; 余博文; 李一鸣; 王琛红; 王威霖; 孙谋 | 96h |
| 56 | 5.9 | M4 项目验收完成 | milestone | 0d | 2026-04-27 | 2026-04-27 | 55 | 0d |  |  | 曹相阳 |  |

Notes:
- 32: 半月报变更（04-03提出，04-04批准）
- 33: 04-04 应急会议
- 34: 04-07前提交
- 35: period_type/sub_period字段
- 36: 增加周期类型选择
- 37: UI显示上/下半月+逻辑调整
- 38: 同月上下半月合并
- 40: 与开发并行
- 41: 边测边修
- 42: 04-17 里程碑
- 43: 里程碑（变更完成）
- 44: 原Iter2功能测试
- 46: 里程碑（W7末）
- 47: 整合UAT、部署、验收
- 52: 甲方参与
- 55: 04-24 上线日
- 56: 里程碑（W8末/04-24）
