# 甘特图v3

Schedule from MS Project, 2026-03-02 to 2026-05-08.

## Calendars

- 标准: Mon-Fri 08:00-12:00, 13:00-17:00; Sat-Sun off.

## Resources

| Resource |
| --- |
| 曹相阳 |
| 金青宏 |
| 曹彭博 |
| 涂睿轩 |
| 曾彦承 |
| 朱写 |
| 钱泰文 |
| 余博文 |
| 李一鸣 |
| 王琛红 |
| 王威霖 |
| 孙谋 |

## Schedule

| ID | WBS | Task | Type | Duration | Start | Finish | Predecessors | Total slack | Free slack | Resources | Work |
| --- | --- | --- | --- | --- | --- | --- | --- | --- | --- | --- | --- |
| 1 | 1 | **S1 需求与设计** |  | 7d | 2026-03-02 | 2026-03-10 |  | 10.5d |  |  | 424h |
| 2 | 1.1 | 项目启动会、协作工具搭建 |  | 1d | 2026-03-02 | 2026-03-02 |  | 10.5d | 0d | 曹相阳; 金青宏; 曹彭博; 涂睿轩; 曾彦承; 朱写; 钱泰文; 余博文; 李一鸣; 王琛红; 王威霖; 孙谋 | 96h |
| 3 | 1.2 | 需求调研与MoSCoW评审 |  | 3d | 2026-03-03 | 2026-03-05 | 2 | 10.5d | 0d | 金青宏; 曹相阳; 曹彭博 | 72h |
| 4 | 1.3 | 技术选型与开发环境 |  | 2d | 2026-03-03 | 2026-03-04 | 2SS+1d | 10.5d | 0d | 曹彭博; 孙谋 | 32h |
| 5 | 1.4 | 数据库设计（ER图+DDL） |  | 4d | 2026-03-05 | 2026-03-10 | 4 | 10.5d | 0d | 曹彭博; 钱泰文 | 64h |
| 6 | 1.5 | 原型与UI设计 |  | 4d | 2026-03-05 | 2026-03-10 | 3SS+2d | 10.5d | 0d | 金青宏 | 32h |
| 7 | 1.6 | 接口设计（OpenAPI） |  | 2d | 2026-03-06 | 2026-03-09 | 5SS+1d | 11.5d | 1d | 曹彭博; 余博文 | 32h |
| 8 | 1.7 | 前端脚手架与公共组件 |  | 3d | 2026-03-05 | 2026-03-09 | 4 | 11.5d | 1d | 涂睿轩; 曾彦承; 朱写 | 72h |
| 9 | 1.8 | 后端脚手架与认证框架 |  | 3d | 2026-03-05 | 2026-03-09 | 4 | 11.5d | 1d | 钱泰文 | 24h |
| 10 | 1.9 | M1 设计评审 | milestone | 0d | 2026-03-10 | 2026-03-10 | 5, 6, 7, 8, 9 | 10.5d | 0d | 曹相阳; 曹彭博 |  |
| 11 | 2 | **S2 迭代1：基础与业务** |  | 12d | 2026-03-11 | 2026-03-26 |  | 10.5d |  |  | 584h |
| 12 | 2.1 | 登录与RBAC权限（前后端） |  | 3d | 2026-03-11 | 2026-03-13 | 10 | 10.5d | 0d | 涂睿轩; 钱泰文 | 48h |
| 13 | 2.2 | 企业信息录入与备案（前后端） |  | 3d | 2026-03-11 | 2026-03-13 | 10 | 10.5d | 0d | 曾彦承; 余博文 | 48h |
| 14 | 2.3 | 省级备案审核（前后端） |  | 3d | 2026-03-11 | 2026-03-13 | 10 | 11.5d | 0d | 朱写; 李一鸣 | 48h |
| 15 | 2.4 | 上报时限管理 |  | 2d | 2026-03-11 | 2026-03-12 | 10 | 40.5d |  | 曹彭博; 涂睿轩 | 32h |
| 16 | 2.5 | 测试用例设计-Iter1 |  | 5d | 2026-03-11 | 2026-03-17 | 10 | 37.5d |  | 王威霖 | 40h |
| 17 | 2.6 | 数据填报功能（前后端） |  | 4d | 2026-03-16 | 2026-03-19 | 13 | 10.5d | 0d | 曾彦承; 余博文 | 64h |
| 18 | 2.7 | 市级审核与上报省级 |  | 3d | 2026-03-16 | 2026-03-18 | 14 | 11.5d | 1d | 朱写; 李一鸣 | 48h |
| 19 | 2.8 | 省级审核、退回、修改日志 |  | 4d | 2026-03-16 | 2026-03-19 | 12 | 10.5d | 0d | 涂睿轩; 王琛红 | 64h |
| 20 | 2.9 | Iter1集成自测 |  | 1d | 2026-03-20 | 2026-03-20 | 17, 18, 19 | 34.5d |  | 涂睿轩; 曾彦承; 朱写; 钱泰文; 余博文; 李一鸣; 王琛红 | 56h |
| 21 | 2.10 | Iter1功能测试 |  | 3d | 2026-03-20 | 2026-03-24 | 17, 18, 19 | 10.5d | 0d | 王威霖 | 24h |
| 22 | 2.11 | Iter1缺陷修复 |  | 2d | 2026-03-25 | 2026-03-26 | 21 | 10.5d | 0d | 涂睿轩; 曾彦承; 朱写; 钱泰文; 余博文; 李一鸣; 王琛红 | 112h |
| 23 | 2.12 | M2 Iter1演示评审 | milestone | 0d | 2026-03-26 | 2026-03-26 | 22 | 10.5d | 0d | 曹相阳 |  |
| 24 | 3 | **S3 迭代2：分析与导出** |  | 5d | 2026-03-27 | 2026-04-02 |  | 10.5d |  |  | 360h |
| 25 | 3.1 | 数据汇总（地区/行业/调查期） |  | 4d | 2026-03-27 | 2026-04-01 | 23 | 10.5d | 0d | 曾彦承; 余博文 | 64h |
| 26 | 3.2 | 对比分析（折线图+表格） |  | 4d | 2026-03-27 | 2026-04-01 | 23 | 10.5d | 0d | 朱写; 李一鸣 | 64h |
| 27 | 3.3 | 通知发布与浏览 |  | 3d | 2026-03-27 | 2026-03-31 | 23 | 11.5d | 1d | 涂睿轩; 王琛红 | 48h |
| 28 | 3.4 | 数据查询（多条件） |  | 3d | 2026-03-27 | 2026-03-31 | 23 | 27.5d |  | 涂睿轩; 钱泰文 | 48h |
| 29 | 3.5 | 数据导出Excel |  | 3d | 2026-03-31 | 2026-04-02 | 25SS+2d | 13.5d | 3d | 曾彦承; 余博文 | 48h |
| 30 | 3.6 | 搭建测试与生产环境 |  | 5d | 2026-03-27 | 2026-04-02 | 23 | 13.5d | 3d | 孙谋 | 40h |
| 31 | 3.7 | 国家接口桩+操作手册 |  | 3d | 2026-03-27 | 2026-03-31 | 23 | 15.5d | 5d | 曹彭博; 金青宏 | 48h |

Notes:
- 1: M1 W2末
- 10: 里程碑
- 23: 里程碑

| ID | WBS | Task | Type | Duration | Start | Finish | Predecessors | Total slack | Free slack | Constraint | Resources | Work |
| --- | --- | --- | --- | --- | --- | --- | --- | --- | --- | --- | --- | --- |
| 32 | 4 | **[CR-001] 半月报变更** |  | 27d | 2026-03-02 | 2026-04-07 |  | 22.5d |  |  |  | 276h |
| 33 | 4.1 | [CR-001] 变更技术方案讨论 |  | 0.5d | 2026-03-02 | 2026-03-02 |  | 29.5d | 0d |  | 曹相阳; 曹彭博; 钱泰文; 余博文; 金青宏 | 20h |
| 34 | 4.2 | [CR-001] 技术方案与改造清单 |  | 2d | 2026-03-02 | 2026-03-04 | 33 | 29.5d | 0d |  | 曹彭博 | 16h |
| 35 | 4.3 | [CR-001] 数据库迁移脚本 |  | 1d | 2026-03-04 | 2026-03-05 | 34 | 31.5d | 2d |  | 钱泰文 | 8h |
| 36 | 4.4 | [CR-001] 上报时限UI改造 |  | 1d | 2026-03-04 | 2026-03-05 | 34 | 31.5d | 2d |  | 涂睿轩; 曹彭博 | 16h |
| 37 | 4.5 | [CR-001] 数据填报模块改造 |  | 1.5d | 2026-03-04 | 2026-03-05 | 34 | 29.5d | 0d |  | 曾彦承; 余博文 | 24h |
| 38 | 4.6 | [CR-001] 数据汇总合并逻辑 |  | 1.5d | 2026-03-06 | 2026-03-09 | 37 | 29.5d | 0d |  | 余博文 | 12h |
| 39 | 4.7 | [CR-001] 接口文档更新 |  | 0.5d | 2026-03-04 | 2026-03-04 | 34 | 46.5d |  |  | 钱泰文; 曹彭博 | 8h |
| 40 | 4.8 | [CR-001] 回归测试用例+执行 |  | 2d | 2026-03-09 | 2026-03-11 | 35, 36, 37, 38 | 29.5d | 0d |  | 王威霖 | 16h |
| 41 | 4.9 | [CR-001] 变更交付验收 |  | 0.5d | 2026-03-11 | 2026-03-11 | 38, 40 | 29.5d | 0d |  | 曹相阳; 曹彭博; 王威霖 | 12h |
| 42 | 4.10 | M-CR1 半月报变更完成 | milestone | 0d | 2026-03-11 | 2026-03-11 | 41 | 29.5d | 19d |  | 曹相阳 |  |
| 43 | 4.11 | Iter2功能测试 |  | 4d | 2026-04-02 | 2026-04-07 | 25, 26, 27 | 10.5d | 0d |  | 王威霖 | 32h |
| 44 | 4.12 | Iter2缺陷修复 |  | 2d | 2026-04-06 | 2026-04-07 | 43SS+2d | 10.5d | 0d |  | 涂睿轩; 曾彦承; 朱写; 钱泰文; 余博文; 李一鸣; 王琛红 | 112h |
| 45 | 4.13 | M3 PC端Beta版本 | milestone | 0d | 2026-04-07 | 2026-04-07 | 44, 29, 30, 31, 42 | 10.5d | 0d |  | 曹相阳; 王威霖 |  |
| 46 | 5 | **S4-A PC端测试与交付** |  | 6d | 2026-04-08 | 2026-04-15 |  | 10.5d |  |  |  | 240h |
| 47 | 5.1 | 系统集成测试（含半月报） |  | 3d | 2026-04-08 | 2026-04-10 | 45 | 10.5d | 0d |  | 王威霖; 曹彭博 | 48h |
| 48 | 5.2 | 性能测试（100并发） |  | 2d | 2026-04-09 | 2026-04-10 | 47SS+1d | 19.5d |  |  | 王威霖; 孙谋 | 32h |
| 49 | 5.3 | 集成缺陷修复 |  | 2d | 2026-04-09 | 2026-04-10 | 47SS+1d | 10.5d | 0d |  | 钱泰文; 余博文; 李一鸣; 王琛红 | 64h |
| 50 | 5.4 | PC端生产部署 |  | 1d | 2026-04-13 | 2026-04-13 | 49 | 10.5d | 0d |  | 孙谋; 曹彭博 | 16h |
| 51 | 5.5 | PC端UAT验收 |  | 2d | 2026-04-14 | 2026-04-15 | 50 | 10.5d | 0d |  | 王威霖; 曹相阳; 金青宏 | 48h |
| 52 | 5.6 | PC端缺陷修复 |  | 1d | 2026-04-15 | 2026-04-15 | 51SS+1d | 10.5d | 0d |  | 钱泰文; 余博文; 李一鸣; 王琛红 | 32h |
| 53 | 5.7 | M4 PC端正式交付 | milestone | 0d | 2026-04-15 | 2026-04-15 | 52 | 10.5d |  |  | 曹相阳 |  |
| 54 | 6 | **[CR-002] 移动端开发** |  | 14.5d | 2026-04-10 | 2026-04-30 |  | 0d |  |  |  | 452h |
| 55 | 6.1 | [CR-002] 变更评审会 |  | 0.5d | 2026-04-10 | 2026-04-10 |  | 0d |  | start no earlier than 2026-04-10 | 曹相阳; 曹彭博; 金青宏; 涂睿轩; 曾彦承; 朱写 | 24h |
| 56 | 6.2 | [CR-002] 移动端技术方案 |  | 2d | 2026-04-10 | 2026-04-14 | 55 | 0d |  |  | 曹彭博 | 16h |
| 57 | 6.3 | [CR-002] 移动端UI/UX设计 |  | 2d | 2026-04-13 | 2026-04-14 | 55SS+1d | 1.5d | 0d |  | 金青宏 | 16h |
| 58 | 6.4 | [CR-002] uni-app脚手架搭建 |  | 2d | 2026-04-14 | 2026-04-16 | 56 | 0d |  |  | 曹彭博; 涂睿轩 | 32h |
| 59 | 6.5 | [CR-002] 后端API适配 |  | 3d | 2026-04-14 | 2026-04-17 | 56 | 4d |  |  | 余博文; 王琛红 | 48h |
| 60 | 6.6 | [CR-002] 企业端-登录与填报 |  | 5d | 2026-04-16 | 2026-04-23 | 57, 58 | 0d |  |  | 曾彦承 | 40h |
| 61 | 6.7 | [CR-002] 企业端-查询与状态 |  | 3d | 2026-04-20 | 2026-04-23 | 60SS+2d | 11d |  |  | 曾彦承 | 24h |
| 62 | 6.8 | [CR-002] 市级端-审核列表与操作 |  | 3d | 2026-04-16 | 2026-04-21 | 57, 58 | 2d | 0d |  | 朱写 | 24h |
| 63 | 6.9 | [CR-002] 市级端-审核统计 |  | 2d | 2026-04-21 | 2026-04-23 | 62 | 11d |  |  | 朱写 | 16h |
| 64 | 6.10 | [CR-002] 省级端-审核+通知 |  | 3.5d | 2026-04-16 | 2026-04-21 | 57, 58 | 1.5d | 0d |  | 涂睿轩 | 28h |
| 65 | 6.11 | [CR-002] 省级端-统计概览 |  | 2d | 2026-04-22 | 2026-04-23 | 64 | 10.5d |  |  | 涂睿轩 | 16h |
| 66 | 6.12 | [CR-002] 移动端联调 |  | 2d | 2026-04-23 | 2026-04-27 | 59, 60, 62, 64 | 0d |  |  | 涂睿轩; 曾彦承; 朱写; 余博文; 王琛红 | 80h |
| 67 | 6.13 | [CR-002] 移动端测试用例 |  | 2d | 2026-04-14 | 2026-04-15 | 57SS+1d | 16.5d |  |  | 王威霖 | 16h |
| 68 | 6.14 | [CR-002] 移动端功能测试 |  | 2d | 2026-04-24 | 2026-04-28 | 66SS+1d | 0d |  |  | 王威霖 | 16h |
| 69 | 6.15 | [CR-002] 移动端缺陷修复 |  | 2d | 2026-04-27 | 2026-04-29 | 68SS+1d | 0d |  |  | 涂睿轩; 曾彦承; 朱写 | 48h |
| 70 | 6.16 | [CR-002] 小程序提审/H5部署 |  | 1d | 2026-04-29 | 2026-04-30 | 69 | 0d |  |  | 孙谋 | 8h |
| 71 | 6.17 | M-CR2 移动端交付验收 | milestone | 0d | 2026-04-30 | 2026-04-30 | 70 | 0d |  |  | 曹相阳; 王威霖 |  |

Notes:
- 32: 04-03提出
- 33: 04-04
- 35: 可回滚
- 42: 里程碑
- 45: 里程碑 04-24前
- 46: 04-24前完成PC端
- 53: 里程碑 04-24
- 54: 04-10提出，05-08交付
- 55: 04-10
- 56: uni-app选型与架构
- 57: 3类用户移动端原型
- 58: 公共组件/路由/登录
- 59: 接口精简/分页/推送
- 60: 移动端核心
- 67: 与开发并行
- 68: 含多机型兼容
- 70: 需甲方企业资质
- 71: 里程碑

| ID | WBS | Task | Type | Duration | Start | Finish | Predecessors | Total slack | Resources | Work |
| --- | --- | --- | --- | --- | --- | --- | --- | --- | --- | --- |
| 72 | 7 | **S4-B 整合上线** |  | 6d | 2026-04-30 | 2026-05-08 |  | 0d |  | 288h |
| 73 | 7.1 | 整合UAT（PC+移动端） |  | 2d | 2026-04-30 | 2026-05-04 | 53, 71 | 0d | 王威霖; 曹相阳; 金青宏 | 48h |
| 74 | 7.2 | 整合UAT问题修复 |  | 2d | 2026-05-01 | 2026-05-05 | 73SS+1d | 0d | 涂睿轩; 曾彦承; 朱写; 钱泰文; 余博文; 李一鸣; 王琛红 | 112h |
| 75 | 7.3 | 移动端生产部署 |  | 1d | 2026-05-05 | 2026-05-06 | 74 | 0d | 孙谋; 曹彭博 | 16h |
| 76 | 7.4 | 用户培训（含移动端操作） |  | 1d | 2026-05-06 | 2026-05-07 | 75 | 0d | 金青宏; 曹相阳 | 16h |
| 77 | 7.5 | 项目验收会与文档归档 |  | 1d | 2026-05-07 | 2026-05-08 | 76 | 0d | 曹相阳; 金青宏; 曹彭博; 涂睿轩; 曾彦承; 朱写; 钱泰文; 余博文; 李一鸣; 王琛红; 王威霖; 孙谋 | 96h |
| 78 | 7.6 | M5 项目最终验收 | milestone | 0d | 2026-05-08 | 2026-05-08 | 77 | 0d | 曹相阳 |  |

Notes:
- 72: 05-08前完成
- 73: 甲方参与
- 77: 05-08
- 78: 里程碑（05-08）
